# 施工进度

Schedule from a web Gantt chart, 2025-07-23 to 2025-10-30.
Every day is a working day

## Schedule

| ID | WBS | Task | Duration | Start | Finish |
| --- | --- | --- | --- | --- | --- |
| 2 | 1 | **现场准备、深化设计、交底、临时设施、防水** | 10d | 2025-07-23 | 2025-08-01 |
| 3 | 1.1 | 交付团队入场、项目启动会 | 10d | 2025-07-23 | 2025-08-01 |
| 4 | 2 | 主要设备/材料到货计划 | 47d | 2025-08-06 | 2025-09-21 |
| 5 | 3 | 机房施工 | 31d | 2025-09-15 | 2025-10-15 |
| 6 | 4 | 测试验收 | 16d | 2025-10-15 | 2025-10-30 |
